# FEED 软件开发

Schedule from MS Project, 2016-05-17 to 2016-11-25.

## Calendars

- Standard: Mon-Fri 08:00-12:00, 13:00-17:00; Sat-Sun off.

## Resources

| Resource |
| --- |
| Management |
| Project Manager |
| Analyst |
| Developer |
| Testers |
| Trainers |
| Technical Communicators |
| Deployment Team |

## Schedule

| ID | WBS | Task | Type | Duration | Start | Finish | Predecessors | Total slack | Free slack | Resources | Work |
| --- | --- | --- | --- | --- | --- | --- | --- | --- | --- | --- | --- |
| 1 | 1 | **范围制定** |  | 3.5d | 2016-05-17 | 2016-05-20 |  | 7d |  |  | 28h |
| 2 | 1.1 | 确定项目范围 |  | 4h | 2016-05-17 | 2016-05-17 |  | 1.5d | 0d | Management | 4h |
| 3 | 1.2 | 确定项目所有人 |  | 1d | 2016-05-17 | 2016-05-18 | 2 | 1.5d | 0d | Management | 8h |
| 4 | 1.3 | 定义资源需求 |  | 1d | 2016-05-18 | 2016-05-19 | 3 | 1.5d | 0d | Project Manager | 8h |
| 5 | 1.4 | 确认核心资源 |  | 1d | 2016-05-19 | 2016-05-20 | 4 | 1.5d | 0d | Project Manager | 8h |
| 6 | 1.5 | 范围制定完成 | milestone | 0d | 2016-05-20 | 2016-05-20 | 5 | 1.5d | 0d |  |  |
| 7 | 2 | **需求分析** |  | 14d | 2016-05-20 | 2016-06-09 |  | 7d |  |  | 120h |
| 8 | 2.1 | 进行需求分析 |  | 5d | 2016-05-20 | 2016-05-27 | 6 | 1.5d | 0d | Analyst | 40h |
| 9 | 2.2 | 草拟软件需求说明书 |  | 3d | 2016-05-27 | 2016-06-01 | 8 | 1.5d | 0d | Analyst | 24h |
| 10 | 2.3 | 制定初步预算 |  | 2d | 2016-06-01 | 2016-06-03 | 9 | 1.5d | 0d | Project Manager | 16h |
| 11 | 2.4 | 与团队一起检查软件需求说明书 |  | 4h | 2016-06-03 | 2016-06-03 | 10 | 1.5d | 0d | Project Manager; Analyst | 8h |
| 12 | 2.5 | 根据反馈更新软件需求说明书 |  | 1d | 2016-06-06 | 2016-06-06 | 11 | 1.5d | 0d | Analyst | 8h |
| 13 | 2.6 | 制定发布时间线 |  | 1d | 2016-06-07 | 2016-06-07 | 12 | 1.5d | 0d | Project Manager | 8h |
| 14 | 2.7 | 获取批准 |  | 4h | 2016-06-08 | 2016-06-08 | 13 | 1.5d | 0d | Management; Project Manager | 8h |
| 15 | 2.8 | 确认所需资源 |  | 1d | 2016-06-08 | 2016-06-09 | 14 | 1.5d | 0d | Project Manager | 8h |
| 16 | 2.9 | 需求分析完成 | milestone | 0d | 2016-06-09 | 2016-06-09 | 15 | 1.5d | 0d |  |  |
| 17 | 3 | **软件设计** |  | 14.5d | 2016-06-09 | 2016-06-29 |  | 7d |  |  | 120h |
| 18 | 3.1 | 检查软件需求说明书 |  | 2d | 2016-06-09 | 2016-06-13 | 16 | 1.5d | 0d | Analyst | 16h |
| 19 | 3.2 | 编写功能说明书 |  | 5d | 2016-06-13 | 2016-06-20 | 18 | 1.5d | 0d | Analyst | 40h |
| 20 | 3.3 | 基于功能说明书开发原型 |  | 4d | 2016-06-20 | 2016-06-24 | 19 | 1.5d | 0d | Analyst | 32h |
| 21 | 3.4 | 检查功能说明书 |  | 2d | 2016-06-24 | 2016-06-28 | 20 | 1.5d | 0d | Management | 16h |
| 22 | 3.5 | 根据反馈更新功能说明书 |  | 1d | 2016-06-28 | 2016-06-29 | 21 | 1.5d | 0d | Management | 8h |
| 23 | 3.6 | 获取批准 |  | 4h | 2016-06-29 | 2016-06-29 | 22 | 1.5d | 0d | Management; Project Manager | 8h |
| 24 | 3.7 | 软件设计完成 | milestone | 0d | 2016-06-29 | 2016-06-29 | 23 | 1.5d | 0d |  |  |

| ID | WBS | Task | Type | Duration | Start | Finish | Predecessors | Total slack | Free slack | Constraint | Resources | Work |
| --- | --- | --- | --- | --- | --- | --- | --- | --- | --- | --- | --- | --- |
| 25 | 4 | **代码开发** |  | 65d | 2016-06-30 | 2016-09-28 |  | 2d |  |  |  | 806h |
| 26 | 4.1 | 检查功能说明书 |  | 1d | 2016-06-30 | 2016-06-30 | 24 | 1.5d | 0d |  | Developer | 8h |
| 27 | 4.2 | 设计模块/层次间接口 |  | 1d | 2016-07-01 | 2016-07-01 | 26 | 1.5d | 0d |  | Developer | 8h |
| 28 | 4.3 | 指派开发人员 |  | 1d | 2016-07-04 | 2016-07-04 | 27 | 1.5d | 0d |  | Developer | 8h |
| 29 | 4.4 | 开发人员编写代码 |  | 57d | 2016-07-05 | 2016-09-21 | 28 | 7d | 0d | finish no earlier than 2016-09-21 | Developer | 456h |
| 30 | 4.5 | 开发人员调试代码 |  | 40.75d | 2016-08-03 | 2016-09-28 | 29FS-7.5% | 0d |  | finish no earlier than 2016-09-28 | Developer | 326h |
| 31 | 4.6 | 代码开发完成 | milestone | 0d | 2016-09-28 | 2016-09-28 | 30 | 0d |  |  |  |  |
| 32 | 5 | **软件测试** |  | 92d | 2016-06-30 | 2016-11-04 |  | 15d |  |  |  | 280h |
| 33 | 5.1 | 基于产品需求说明书制定单元测试计划 |  | 4d | 2016-06-30 | 2016-07-05 | 24 | 61d |  |  | Testers | 32h |
| 34 | 5.2 | 基于产品需求说明书制定集成测试计划 |  | 4d | 2016-06-30 | 2016-07-05 | 24 | 103d |  |  | Testers | 32h |
| 35 | 5.3 | **单元测试** |  | 15d | 2016-09-29 | 2016-10-19 |  | 0d |  |  |  | 120h |
| 36 | 5.3.1 | 检查模块代码 |  | 5d | 2016-09-29 | 2016-10-05 | 33, 31 | 0d |  |  | Testers | 40h |
| 37 | 5.3.2 | 基于需求说明测试组件模块 |  | 2d | 2016-10-06 | 2016-10-07 | 31, 36 | 0d |  |  | Testers | 16h |
| 38 | 5.3.3 | 基于需求说明书识别异常错误 |  | 3d | 2016-10-10 | 2016-10-12 | 37 | 0d |  |  | Testers | 24h |
| 39 | 5.3.4 | 修改代码 |  | 3d | 2016-10-13 | 2016-10-17 | 38 | 0d |  |  | Testers | 24h |
| 40 | 5.3.5 | 重新测试修改的代码 |  | 2d | 2016-10-18 | 2016-10-19 | 39 | 0d |  |  | Testers | 16h |
| 41 | 5.3.6 | 单元测试完成 | milestone | 0d | 2016-10-19 | 2016-10-19 | 40 | 0d |  |  |  |  |
| 42 | 5.4 | **集成测试** |  | 12d | 2016-10-20 | 2016-11-04 |  | 0d |  |  |  | 96h |
| 43 | 5.4.1 | 模块集成测试 |  | 5d | 2016-10-20 | 2016-10-26 | 41 | 0d |  |  | Testers | 40h |
| 44 | 5.4.2 | 基于需求说明书识别异常错误 |  | 2d | 2016-10-27 | 2016-10-28 | 43 | 0d |  |  | Testers | 16h |
| 45 | 5.4.3 | 修改代码 |  | 3d | 2016-10-31 | 2016-11-02 | 44 | 0d |  |  | Testers | 24h |
| 46 | 5.4.4 | 修改代码重新测试 |  | 2d | 2016-11-03 | 2016-11-04 | 45 | 0d |  |  | Testers | 16h |
| 47 | 5.4.5 | 集成测试完成 | milestone | 0d | 2016-11-04 | 2016-11-04 | 46 | 0d |  |  |  |  |
| 48 | 6 | **培训资料** |  | 89d | 2016-06-30 | 2016-11-01 |  | 3d |  |  |  | 256h |
| 49 | 6.1 | 编写最终用户培训大纲 |  | 3d | 2016-06-30 | 2016-07-04 | 24 | 65d | 62d |  | Trainers | 24h |
| 50 | 6.2 | 编写技术支持人员培训大纲 |  | 3d | 2016-06-30 | 2016-07-04 | 24 | 65d | 62d |  | Trainers | 24h |
| 51 | 6.3 | 确定培训方式（计算机远程或现场） |  | 2d | 2016-06-30 | 2016-07-01 | 24 | 66d | 63d |  | Trainers | 16h |
| 52 | 6.4 | 编写培训资料 |  | 3w | 2016-09-29 | 2016-10-19 | 49, 31, 50, 51 | 3d | 0d |  | Trainers | 120h |
| 53 | 6.5 | 研究培训适用性 |  | 4d | 2016-10-20 | 2016-10-25 | 52 | 3d | 0d |  | Trainers | 32h |
| 54 | 6.6 | 完善最终培训资料 |  | 3d | 2016-10-26 | 2016-10-28 | 53 | 3d | 0d |  | Trainers | 24h |
| 55 | 6.7 | 制定培训交付方案 |  | 2d | 2016-10-31 | 2016-11-01 | 54 | 3d | 0d |  | Trainers | 16h |
| 56 | 6.8 | 培训资料完成 | milestone | 0d | 2016-11-01 | 2016-11-01 | 55 | 3d |  |  |  |  |

| ID | WBS | Task | Type | Duration | Start | Finish | Predecessors | Total slack | Free slack | Resources | Work |
| --- | --- | --- | --- | --- | --- | --- | --- | --- | --- | --- | --- |
| 57 | 7 | **文档编写** |  | 67.6d | 2016-06-30 | 2016-10-03 |  | 24.4d |  |  | 336h |
| 58 | 7.1 | 编写帮助大纲 |  | 1d | 2016-06-30 | 2016-06-30 | 24 | 71d | 30.5d | Technical Communicators | 8h |
| 59 | 7.2 | 编写帮助文档 |  | 3w | 2016-08-12 | 2016-09-02 | 58, 29FS-5% | 40.5d | 0d | Technical Communicators | 120h |
| 60 | 7.3 | 检查帮助文档 |  | 3d | 2016-09-02 | 2016-09-07 | 59 | 40.5d | 0d | Technical Communicators | 24h |
| 61 | 7.4 | 根据反馈更新帮助文档 |  | 2d | 2016-09-07 | 2016-09-09 | 60 | 40.5d | 16.1d | Technical Communicators | 16h |
| 62 | 7.5 | 编写用户手册大纲 |  | 2d | 2016-06-30 | 2016-07-01 | 24 | 71d | 46.6d | Technical Communicators | 16h |
| 63 | 7.6 | 编写用户手册 |  | 3w | 2016-09-06 | 2016-09-27 | 62, 29FS-2% | 24.4d | 0d | Technical Communicators | 120h |
| 64 | 7.7 | 检测所有用户文档 |  | 2d | 2016-09-27 | 2016-09-29 | 63 | 24.4d | 0d | Technical Communicators | 16h |
| 65 | 7.8 | 根据反馈更新用户文档 |  | 2d | 2016-09-29 | 2016-10-03 | 64 | 24.4d | 0d | Technical Communicators | 16h |
| 66 | 7.9 | 文档编写完成 | milestone | 0d | 2016-10-03 | 2016-10-03 | 65, 61 | 24.4d |  |  |  |
| 67 | 8 | **现场试运行** |  | 113.5d | 2016-06-09 | 2016-11-15 |  | 0d |  |  | 64h |
| 68 | 8.1 | 组建测试小组 |  | 1d | 2016-06-09 | 2016-06-10 | 16 | 104.5d | 0d | Project Manager | 8h |
| 69 | 8.2 | 制定软件发布方案 |  | 1d | 2016-06-10 | 2016-06-13 | 68 | 104.5d |  |  |  |
| 70 | 8.3 | 安装部署软件 |  | 1d | 2016-11-07 | 2016-11-07 | 47, 69, 66, 56 | 0d |  | Deployment Team | 8h |
| 71 | 8.4 | 获取用户反馈 |  | 1w | 2016-11-08 | 2016-11-14 | 70 | 0d |  | Deployment Team | 40h |
| 72 | 8.5 | 评估测试信息 |  | 1d | 2016-11-15 | 2016-11-15 | 71 | 0d |  | Deployment Team | 8h |
| 73 | 8.6 | 试运行完成 | milestone | 0d | 2016-11-15 | 2016-11-15 | 72 | 0d |  |  |  |
| 74 | 9 | **现场部署** |  | 5d | 2016-11-16 | 2016-11-22 |  | 0d |  |  | 40h |
| 75 | 9.1 | 决定最终部署策略 |  | 1d | 2016-11-16 | 2016-11-16 | 73 | 0d |  | Deployment Team | 8h |
| 76 | 9.2 | 制定部署方案 |  | 1d | 2016-11-17 | 2016-11-17 | 75 | 0d |  | Deployment Team | 8h |
| 77 | 9.3 | 确认部署资源 |  | 1d | 2016-11-18 | 2016-11-18 | 76 | 0d |  | Deployment Team | 8h |
| 78 | 9.4 | 培训支持人员 |  | 1d | 2016-11-21 | 2016-11-21 | 77 | 0d |  | Deployment Team | 8h |
| 79 | 9.5 | 部署软件 |  | 1d | 2016-11-22 | 2016-11-22 | 78 | 0d |  | Deployment Team | 8h |
| 80 | 9.6 | 部署完成 | milestone | 0d | 2016-11-22 | 2016-11-22 | 79 | 0d |  |  |  |

| ID | WBS | Task | Type | Duration | Start | Finish | Predecessors | Total slack | Resources | Work |
| --- | --- | --- | --- | --- | --- | --- | --- | --- | --- | --- |
| 81 | 10 | **事后回顾** |  | 3d | 2016-11-23 | 2016-11-25 |  | 0d |  | 24h |
| 82 | 10.1 | 总结经验教训 |  | 1d | 2016-11-23 | 2016-11-23 | 80 | 0d | Project Manager | 8h |
| 83 | 10.2 | 传达给团队成员 |  | 1d | 2016-11-24 | 2016-11-24 | 82 | 0d | Project Manager | 8h |
| 84 | 10.3 | 建立软件维护团队 |  | 1d | 2016-11-25 | 2016-11-25 | 83 | 0d | Project Manager | 8h |
| 85 | 10.4 | 事后回顾完成 | milestone | 0d | 2016-11-25 | 2016-11-25 | 84 | 0d |  |  |
| 86 | 11 | 软件开发完成 | milestone | 0d | 2016-11-25 | 2016-11-25 | 85 | 0d |  |  |
